# Aklak lhd 3ndena

Schedule from MS Project, 2024-12-07 to 2025-07-27, status date 2024-12-21, costs in $, A marks actual dates.
software project for restaurant
MWP
this is a software project that enhancement the delivery of the resturant and the service of the project

## Calendars

- Standard: Mon-Thu 08:00-12:00, 13:00-17:00; Fri-Sat off; Sun 08:00-12:00, 13:00-17:00.

## Resources

| Resource | Rate |
| --- | --- |
| Data Analyist | 70 |
| Project Manager | 100 |
| Software Engineer | 90 |
| UI Designer | 50 |
| UX designer | 50 |
| Data Base Developer | 70 |
| Front_end Developer Web | 60 |
| Back_end Developer web | 70 |
| Unit Tester | 60 |
| Accepance tester | 50 |
| Compatipility tester | 30 |
| Security tester | 120 |
| Integration tester | 60 |
| performance tester | 90 |
| system tester | 60 |
| Deployment Manager web | 100 |
| Tech leader | 80 |
| Ai Tool |  |
| Web Server |  |
| Architecutre Engineer | 30 |
| Ai Engneer | 70 |
| Front end Developer Mobile | 60 |
| Back end Developer Mobile | 70 |
| regression tester | 50 |
| Deployment Manager Mobile | 100 |
| support team | 100 |
| updates team | 100 |

## Schedule

| ID | WBS | Task | Type | Duration | Start | Finish | Predecessors | Complete | Remaining | Baseline start | Baseline finish | Baseline duration | Total slack | Free slack | Constraint | Resources | Work | Actual work | Cost | Baseline cost | Actual cost |
| --- | --- | --- | --- | --- | --- | --- | --- | --- | --- | --- | --- | --- | --- | --- | --- | --- | --- | --- | --- | --- | --- |
| 1 | 1 | **اكلك لحد عندك** |  | 166d | 2024-12-07 A | 2025-07-27 |  | 14% | 142.58d | 2024-12-07 | 2025-10-22 | 228.5d | 0d |  |  |  | 1720h | 122.8h | 127,064 | 149,064 | 11,152 |
| 2 | 1.1 | **Requirement Specifications and Analyses** |  | 33d | 2024-12-08 A | 2025-01-21 |  | 48% | 17.2d | 2024-12-08 | 2025-01-21 | 33d | 0d |  |  |  | 216.8h | 122.8h | 19,152 | 19,152 | 11,152 |
| 3 | 1.1.1 | **Gathering Requirements** |  | 5d | 2024-12-08 A | 2024-12-12 A |  | 100% |  | 2024-12-08 | 2024-12-12 | 5d |  |  |  |  | 62.8h | 62.8h | 5,952 | 5,952 | 5,952 |
| 4 | 1.1.1.1 | interviews with manager of restaurant |  | 5d | 2024-12-08 A | 2024-12-12 A |  | 100% |  | 2024-12-08 | 2024-12-12 | 5d |  |  |  | Project Manager [75%] | 30h | 30h | 3,000 | 3,000 | 3,000 |
| 5 | 1.1.1.2 | Questionnares about workers |  | 4.2d | 2024-12-08 A | 2024-12-12 A | 4FF | 100% |  | 2024-12-08 | 2024-12-12 | 4.2d |  |  |  | Software Engineer [50%] | 16.8h | 16.8h | 1,512 | 1,512 | 1,512 |
| 6 | 1.1.1.3 | Workshops in restaurant |  | 4d | 2024-12-09 A | 2024-12-12 A | 5FF | 100% |  | 2024-12-09 | 2024-12-12 | 4d |  |  |  | Software Engineer [50%] | 16h | 16h | 1,440 | 1,440 | 1,440 |
| 7 | 1.1.2 | **Requirements classification** |  | 33d | 2024-12-08 A | 2025-01-21 |  | 30% | 23d | 2024-12-08 | 2025-01-21 | 33d | 0d |  |  |  | 66h | 20h | 5,280 | 5,280 | 1,600 |
| 8 | 1.1.2.1 | Functional Requirements |  | 9d | 2024-12-08 A | 2024-12-18 A |  | 100% |  | 2024-12-08 | 2024-12-18 | 9d |  |  |  | Tech leader [25%] | 18h | 18h | 1,440 | 1,440 | 1,440 |
| 9 | 1.1.2.2 | non_Functional Requirements |  | 9d | 2024-12-19 A | 2024-12-31 | 8 | 11% | 8d | 2024-12-19 | 2024-12-31 | 9d | 0d |  |  | Tech leader [25%] | 18h | 2h | 1,440 | 1,440 | 160 |
| 10 | 1.1.2.3 | System Requirements |  | 15d | 2025-01-01 | 2025-01-21 | 9 |  |  | 2025-01-01 | 2025-01-21 | 15d | 0d |  |  | Tech leader [25%] | 30h |  | 2,400 | 2,400 |  |
| 11 | 1.1.3 | **Requirements Documentation** |  | 16d | 2024-12-15 A | 2025-01-05 |  | 45% | 8.73d | 2024-12-15 | 2025-01-05 | 16d | 12d |  |  |  | 88h | 40h | 7,920 | 7,920 | 3,600 |
| 12 | 1.1.3.1 | **Writing (SRS)** |  | 16d | 2024-12-15 A | 2025-01-05 |  | 45% | 8.73d | 2024-12-15 | 2025-01-05 | 16d | 12d |  |  |  | 88h | 40h | 7,920 | 7,920 | 3,600 |
| 13 | 1.1.3.1.1 | Descripe restaurant project |  | 12d | 2024-12-15 A | 2024-12-30 | 5 | 42% | 7d | 2024-12-15 | 2024-12-30 | 12d | 16d |  |  | Software Engineer [25%] | 24h | 10h | 2,160 | 2,160 | 900 |
| 14 | 1.1.3.1.2 | details about Functional Requirements and non_Functional Requirements |  | 16d | 2024-12-15 A | 2025-01-05 | 6 | 31% | 11d | 2024-12-15 | 2025-01-05 | 16d | 12d |  |  | Software Engineer [25%] | 32h | 10h | 2,880 | 2,880 | 900 |
| 15 | 1.1.3.1.3 | Descripe sequence of operations |  | 8d | 2024-12-15 A | 2024-12-24 | 6 | 63% | 3d | 2024-12-15 | 2024-12-24 | 8d | 20d | 0d |  | Software Engineer [25%] | 16h | 10h | 1,440 | 1,440 | 900 |
| 16 | 1.1.3.1.4 | Constrains |  | 8d | 2024-12-15 A | 2024-12-24 | 15FF | 63% | 3d | 2024-12-15 | 2024-12-24 | 8d | 20d |  |  | Software Engineer [25%] | 16h | 10h | 1,440 | 1,440 | 900 |
| 17 | 1.2 | Prototyping |  | 3d | 2025-01-22 | 2025-01-26 | 2 |  |  | 2025-01-22 | 2025-01-26 | 3d | 0d |  |  | Project Manager [50%] | 12h |  | 1,200 | 1,200 |  |
| 18 | 1.3 | **Requirements Validation** |  | 3d | 2025-01-27 | 2025-01-29 | 17 |  |  | 2025-01-27 | 2025-01-29 | 3d | 0d |  |  |  | 12h |  | 1,200 | 1,200 |  |
| 19 | 1.3.1 | Acceptance Testing |  | 3d | 2025-01-27 | 2025-01-29 |  |  |  | 2025-01-27 | 2025-01-29 | 3d | 0d |  |  | Project Manager [50%] | 12h |  | 1,200 | 1,200 |  |
| 20 | 1.4 | End of requirments | milestone | 0d | 2024-12-07 A | 2024-12-07 A |  | 100% |  | 2024-12-07 | 2024-12-07 | 0d |  |  |  |  |  |  |  |  |  |
| 21 | 1.5 | **System Design** |  | 91d | 2025-01-30 | 2025-06-05 | 18 |  |  | 2025-01-30 | 2025-06-23 | 103d | 0d |  |  |  | 188.8h |  | 10,384 | 12,064 |  |
| 22 | 1.5.1 | **High-Level Design** |  | 85d | 2025-02-09 | 2025-06-05 | 29 |  |  | 2025-02-25 | 2025-06-23 | 85d | 0d |  |  |  | 69.6h |  | 3,840 | 3,840 |  |
| 23 | 1.5.1.1 | Set UX |  | 9d | 2025-02-09 | 2025-06-03 |  |  |  | 2025-02-25 | 2025-06-19 | 9d | 0d |  | start no earlier than 2024-11-07 | UX designer [80%] | 57.6h |  | 2,880 | 2,880 |  |
| 24 | 1.5.1.2 | Choose System Design |  | 2d | 2025-06-04 | 2025-06-05 | 23 |  |  | 2025-06-22 | 2025-06-23 | 2d | 0d |  |  | Tech leader [75%] | 12h |  | 960 | 960 |  |

| ID | WBS | Task | Type | Duration | Start | Finish | Predecessors | Complete | Baseline start | Baseline finish | Baseline duration | Total slack | Free slack | Resources | Work | Cost | Baseline cost |
| --- | --- | --- | --- | --- | --- | --- | --- | --- | --- | --- | --- | --- | --- | --- | --- | --- | --- |
| 25 | 1.5.2 | **Data Flow** |  | 6d | 2025-01-30 | 2025-02-06 |  |  | 2025-01-30 | 2025-02-06 | 6d | 121d |  |  | 71.2h | 5,104 | 5,104 |
| 26 | 1.5.2.1 | Design Diagrams to describe data flow |  | 4d | 2025-01-30 | 2025-02-04 |  |  | 2025-01-30 | 2025-02-04 | 4d | 121d | 0d | Data Analyist [60%] | 19.2h | 1,344 | 1,344 |
| 27 | 1.5.2.2 | prototype for user interface based on diagrams |  | 2d | 2025-02-05 | 2025-02-06 | 26 |  | 2025-02-05 | 2025-02-06 | 2d | 121d |  | Tech leader [75%] | 12h | 960 | 960 |
| 28 | 1.5.2.3 | Database Design |  | 5d | 2025-01-30 | 2025-02-05 |  |  | 2025-01-30 | 2025-02-05 | 5d | 122d |  | Data Base Developer | 40h | 2,800 | 2,800 |
| 29 | 1.5.3 | **Low-Level Design** |  | 6d | 2025-01-30 | 2025-02-06 |  |  | 2025-01-30 | 2025-02-24 | 18d | 0d |  |  | 48h | 1,440 | 3,120 |
| 30 | 1.5.3.1 | data Structures |  | 6d | 2025-01-30 | 2025-02-06 |  |  | 2025-02-17 | 2025-02-24 | 6d | 0d |  | Architecutre Engineer | 48h | 1,440 | 1,440 |
| 31 | 1.6 | Prototyping |  | 2d | 2025-06-08 | 2025-06-09 | 22 |  | 2025-06-24 | 2025-06-25 | 2d | 0d |  | Project Manager [75%] | 12h | 1,200 | 1,200 |
| 32 | 1.7 | **Requirements Validation** |  | 2d | 2025-06-10 | 2025-06-11 | 31 |  | 2025-06-26 | 2025-06-29 | 2d | 0d |  |  | 12h | 1,200 | 1,200 |
| 33 | 1.7.1 | Acceptance Testing |  | 2d | 2025-06-10 | 2025-06-11 |  |  | 2025-06-26 | 2025-06-29 | 2d | 0d |  | Project Manager [75%] | 12h | 1,200 | 1,200 |
| 34 | 1.8 | end of system design | milestone | 0d | 2024-12-07 A | 2024-12-07 A |  | 100% | 2024-12-07 | 2024-12-07 | 0d |  |  |  |  |  |  |
| 35 | 1.9 | **Implematation** |  | 32d | 2025-06-12 | 2025-07-27 | 32 |  | 2025-06-30 | 2025-08-14 | 34d | 0d |  |  | 590.4h | 37,840 | 55,360 |
| 36 | 1.9.1 | **Website Application** |  | 32d | 2025-06-12 | 2025-07-27 |  |  | 2025-06-30 | 2025-08-13 | 33d | 0d |  |  | 406.4h | 25,760 | 33,200 |
| 37 | 1.9.1.1 | **front_end** |  | 32d | 2025-06-12 | 2025-07-27 |  |  | 2025-06-30 | 2025-08-12 | 32d | 0d |  |  | 262.4h | 15,680 | 14,720 |
| 38 | 1.9.1.1.1 | UI |  | 1d | 2025-06-12 | 2025-06-12 |  |  | 2025-06-30 | 2025-06-30 | 1d | 31d |  | UI Designer [80%] | 6.4h | 320 | 480 |
| 39 | 1.9.1.1.2 | Choose IDE |  | 7d | 2025-06-12 | 2025-06-22 |  |  | 2025-06-30 | 2025-07-08 | 7d | 0d |  | Front_end Developer Web | 56h | 3,360 | 2,240 |
| 40 | 1.9.1.1.3 | html-5 |  | 4d | 2025-06-23 | 2025-06-26 | 39 |  | 2025-07-09 | 2025-07-14 | 4d | 0d |  | Front_end Developer Web | 32h | 1,920 | 1,920 |
| 41 | 1.9.1.1.4 | css |  | 4d | 2025-06-29 | 2025-07-02 | 40 |  | 2025-07-15 | 2025-07-20 | 4d | 0d |  | Front_end Developer Web | 32h | 1,920 | 1,920 |
| 42 | 1.9.1.1.5 | Bootstrape |  | 7d | 2025-07-03 | 2025-07-13 | 41 |  | 2025-07-21 | 2025-07-29 | 7d | 0d |  | Front_end Developer Web | 56h | 3,360 | 3,360 |
| 43 | 1.9.1.1.6 | JavaScript |  | 2w | 2025-07-14 | 2025-07-27 | 42 |  | 2025-07-30 | 2025-08-12 | 2w | 0d |  | Front_end Developer Web | 80h | 4,800 | 4,800 |
| 44 | 1.9.1.2 | **Back_end** |  | 7d | 2025-06-12 | 2025-06-22 | 37SS |  | 2025-06-30 | 2025-07-29 | 22d | 14d | 0d | Back_end Developer web | 56h | 3,920 | 12,320 |
| 45 | 1.9.1.2.1 | Create Database using SQL server |  | 7d | 2025-06-12 | 2025-06-22 |  |  | 2025-06-30 | 2025-07-08 | 7d | 14d |  |  |  |  |  |
| 46 | 1.9.1.3 | Integreation between front end and back end |  | 1d | 2025-06-23 | 2025-06-23 | 44 |  | 2025-07-30 | 2025-07-30 | 1d | 14d | 0d | Back_end Developer web | 8h | 560 | 560 |
| 47 | 1.9.1.4 | Adding AI Tool |  | 10d | 2025-06-24 | 2025-07-07 | 46 |  | 2025-07-31 | 2025-08-13 | 10d | 14d |  | Ai Engneer | 80h | 5,600 | 5,600 |
| 48 | 1.9.2 | **Mobile Application** |  | 13d | 2025-06-12 | 2025-06-30 | 36SS |  | 2025-06-30 | 2025-08-14 | 34d | 7d |  |  | 184h | 12,080 | 22,160 |
| 49 | 1.9.2.1 | **front_end** |  | 10d | 2025-06-12 | 2025-06-25 |  |  | 2025-07-03 | 2025-07-16 | 10d | 22d | 0d | Front end Developer Mobile | 80h | 4,800 | 4,800 |
| 50 | 1.9.2.1.1 | focus on UI |  | 4d | 2025-06-12 | 2025-06-17 |  |  | 2025-07-03 | 2025-07-08 | 4d | 28d |  |  |  |  |  |
| 51 | 1.9.2.1.2 | coding by flutter |  | 2w | 2025-06-12 | 2025-06-25 |  |  | 2025-07-03 | 2025-07-16 | 2w | 22d |  |  |  |  |  |

| ID | WBS | Task | Type | Duration | Start | Finish | Predecessors | Complete | Baseline start | Baseline finish | Baseline duration | Total slack | Free slack | Resources | Work | Cost | Baseline cost |
| --- | --- | --- | --- | --- | --- | --- | --- | --- | --- | --- | --- | --- | --- | --- | --- | --- | --- |
| 52 | 1.9.2.2 | **Back-end** |  | 3d | 2025-06-12 | 2025-06-16 | 49SS |  | 2025-07-03 | 2025-07-31 | 21d | 7d | 0d | Back end Developer Mobile | 24h | 1,680 | 11,760 |
| 53 | 1.9.2.2.1 | reuse the orignal database |  | 3d | 2025-06-12 | 2025-06-16 |  |  | 2025-07-03 | 2025-07-07 | 3d | 7d |  |  |  |  |  |
| 54 | 1.9.2.3 | Integration between front and back |  | 10d | 2025-06-17 | 2025-06-30 | 52 |  | 2025-08-03 | 2025-08-14 | 10d | 7d | 0d | Back end Developer Mobile | 80h | 5,600 | 5,600 |
| 55 | 1.10 | Prototyping |  | 1d | 2025-07-01 | 2025-07-01 | 54 |  | 2025-08-17 | 2025-08-17 | 1d | 7d | 0d | Project Manager [75%] | 6h | 600 | 600 |
| 56 | 1.11 | **Requirements Validation** |  | 1d | 2025-07-02 | 2025-07-02 | 55 |  | 2025-08-18 | 2025-08-18 | 1d | 7d | 0d | Project Manager [75%] | 6h | 600 | 600 |
| 57 | 1.11.1 | Acceptance Testing |  | 1d | 2025-07-02 | 2025-07-02 |  |  | 2025-08-18 | 2025-08-18 | 1d | 7d |  |  |  |  |  |
| 58 | 1.12 | End of Implementation | milestone | 0d | 2024-12-07 A | 2024-12-07 A |  | 100% | 2024-12-07 | 2024-12-07 | 0d |  |  |  |  |  |  |
| 59 | 1.13 | **Testing** |  | 10d | 2025-07-02 | 2025-07-16 | 56 |  | 2025-08-19 | 2025-09-01 | 10d | 7d |  |  | 384h | 25,688 | 23,688 |
| 60 | 1.13.1 | **test execution** |  | 10d | 2025-07-03 | 2025-07-16 |  |  | 2025-08-19 | 2025-09-01 | 10d | 7d |  |  | 384h | 25,688 | 23,688 |
| 61 | 1.13.1.1 | unit testing |  | 7d | 2025-07-03 | 2025-07-13 |  |  | 2025-08-19 | 2025-08-27 | 7d | 10d |  | Unit Tester [70%] | 39.2h | 2,352 | 2,352 |
| 62 | 1.13.1.2 | compatipility testing |  | 7d | 2025-07-03 | 2025-07-13 |  |  | 2025-08-24 | 2025-09-01 | 7d | 10d | 0d | Compatipility tester [50%] | 28h | 840 | 840 |
| 63 | 1.13.1.3 | security testing |  | 7d | 2025-07-03 | 2025-07-13 | 62FF |  | 2025-08-24 | 2025-09-01 | 7d | 10d | 3d | Security tester [80%] | 44.8h | 5,376 | 5,376 |
| 64 | 1.13.1.4 | integration testing |  | 10d | 2025-07-03 | 2025-07-16 | 63FF |  | 2025-08-19 | 2025-09-01 | 10d | 7d | 0d | Integration tester [60%] | 48h | 2,880 | 2,880 |
| 65 | 1.13.1.5 | performance testing |  | 7d | 2025-07-08 | 2025-07-16 | 64FF |  | 2025-08-24 | 2025-09-01 | 7d | 7d |  | performance tester | 56h | 5,040 | 5,040 |
| 66 | 1.13.1.6 | regression testing |  | 1w | 2025-07-03 | 2025-07-09 |  |  | 2025-08-26 | 2025-09-01 | 1w | 12d |  | regression tester | 40h | 2,000 |  |
| 67 | 1.13.1.7 | acceptance testing |  | 10d | 2025-07-03 | 2025-07-16 |  |  |  |  |  | 7d |  | Accepance tester [60%] | 48h | 2,400 |  |
| 68 | 1.13.1.8 | system testing |  | 2w | 2025-07-03 | 2025-07-16 |  |  |  |  |  | 7d |  | system tester | 80h | 4,800 |  |
| 69 | 1.13.2 | End of Testing | milestone | 0d | 2025-07-02 | 2025-07-02 |  |  |  |  |  | 17d |  |  |  |  |  |
| 70 | 1.14 | **Deployment** |  | 2.5d | 2024-12-08 | 2024-12-10 |  |  | 2025-09-02 | 2025-09-10 | 6.5d | 133.5d | 0d |  | 40h | 4,000 | 8,800 |
| 71 | 1.14.1 | **for web application** |  | 2.5d | 2024-12-08 | 2024-12-10 |  |  | 2025-09-02 | 2025-09-08 | 4.5d | 133.5d | 0d | Deployment Manager web | 20h | 2,000 | 3,600 |
| 72 | 1.14.1.1 | buy web server |  | 1d | 2024-12-08 | 2024-12-08 |  |  | 2025-09-04 | 2025-09-04 | 1d | 133.5d | 0d | Web Server [0.1%] |  |  |  |
| 73 | 1.14.1.2 | deployment to srever |  | 1d | 2024-12-09 | 2024-12-09 | 72 |  | 2025-09-07 | 2025-09-07 | 1d | 133.5d | 0d |  |  |  |  |
| 74 | 1.14.1.3 | Go Live |  | 4h | 2024-12-10 | 2024-12-10 | 73 |  | 2025-09-08 | 2025-09-08 | 4h | 133.5d |  |  |  |  |  |
| 75 | 1.14.2 | **for mobile application** |  | 2.5d | 2024-12-08 | 2024-12-10 | 71SS |  | 2025-09-02 | 2025-09-10 | 6.5d | 133.5d |  | Deployment Manager Mobile | 20h | 2,000 | 5,200 |
| 76 | 1.14.2.1 | buy Server |  | 1d | 2024-12-08 | 2024-12-08 |  |  | 2025-09-08 | 2025-09-08 | 1d | 133.5d | 0d | Web Server [0.1%] |  |  |  |
| 77 | 1.14.2.2 | Deployment to server |  | 1d | 2024-12-09 | 2024-12-09 | 76 |  | 2025-09-09 | 2025-09-09 | 1d | 133.5d | 0d |  |  |  |  |
| 78 | 1.14.2.3 | Go Live |  | 4h | 2024-12-10 | 2024-12-10 | 77 |  | 2025-09-10 | 2025-09-10 | 4h | 133.5d |  |  |  |  |  |
| 79 | 1.15 | End of Deployment | milestone | 0d | 2024-12-07 | 2024-12-07 |  |  |  |  |  | 166d |  |  |  |  |  |

| ID | WBS | Task | Type | Duration | Start | Finish | Predecessors | Baseline start | Baseline finish | Baseline duration | Total slack | Free slack | Resources | Work | Cost | Baseline cost |
| --- | --- | --- | --- | --- | --- | --- | --- | --- | --- | --- | --- | --- | --- | --- | --- | --- |
| 80 | 1.16 | **Maintanance** |  | 30d | 2024-12-10 | 2025-01-21 | 70 | 2025-09-10 | 2025-10-22 | 30d | 133.5d |  |  | 240h | 24,000 | 24,000 |
| 81 | 1.16.1 | Monitoring and support |  | 20d | 2024-12-10 | 2025-01-07 |  | 2025-09-10 | 2025-10-08 | 20d | 133.5d | 0d | support team | 160h | 16,000 | 16,000 |
| 82 | 1.16.2 | event based updates |  | 10d | 2025-01-07 | 2025-01-21 | 81 | 2025-10-08 | 2025-10-22 | 10d | 133.5d |  | updates team | 80h | 8,000 | 8,000 |
| 83 | 1.16.3 | END OF PROJECT | milestone | 0d | 2024-12-10 | 2024-12-10 |  |  |  |  | 163.5d |  |  |  |  |  |
